# LGC2 planning

Schedule from MS Project, 2015-01-07 to 2015-05-12, A marks actual dates.
CERN

## Calendars

- Standard: Mon-Fri 08:00-12:00, 13:00-17:00; Sat-Sun off.

## Resources

| Resource |
| --- |
| Tomas Hubinek |
| Marie Anne Henri Barbier |

## Schedule

| ID | WBS | Task | Duration | Start | Finish | Predecessors | Complete | Remaining | Total slack | Free slack | Resources | Work | Actual work |
| --- | --- | --- | --- | --- | --- | --- | --- | --- | --- | --- | --- | --- | --- |
| 1 | 1 | **Input data reader and analyzer** | 16d | 2015-01-07 A | 2015-01-28 A |  | 100% |  |  |  |  |  |  |
| 2 | 1.1 | Review of document describing input file structure | 0.5d | 2015-01-07 A | 2015-01-07 A |  | 100% |  |  |  |  |  |  |
| 3 | 1.2 | Prepare complex test input file | 1d | 2015-01-07 A | 2015-01-08 A | 2 | 100% |  |  |  |  |  |  |
| 4 | 1.3 | Input file reader -- check consistency | 1.5d | 2015-01-08 A | 2015-01-09 A | 3 | 100% |  |  |  |  |  |  |
| 5 | 1.4 | Fix problems / Add new options | 1d | 2015-01-12 A | 2015-01-12 A | 4 | 100% |  |  |  |  |  |  |
| 6 | 1.5 | Error reporting (PDOR and CALA,...) | 0.5d | 2015-01-07 A | 2015-01-07 A |  | 100% |  |  |  |  |  |  |
| 7 | 1.6 | Input data analyzer (+tests,debugging, documentation) | 4d | 2015-01-22 A | 2015-01-27 A | 5, 13, 12 | 100% |  |  |  |  |  |  |
| 8 | 1.7 | Calculation type selector (+tests,debugging, documentation) | 5d | 2015-01-22 A | 2015-01-28 A | 5, 13, 12 | 100% |  |  |  |  |  |  |
| 9 | 2 | **Measurements** | 8d | 2015-01-12 A | 2015-01-21 A |  | 100% |  |  |  |  |  |  |
| 10 | 2.1 | Redesign existing classes, data storage (adjustable, simple objects) | 6d | 2015-01-12 A | 2015-01-19 A |  | 100% |  |  |  |  |  |  |
| 11 | 2.2 | Implementation of TLEVEL and OFFSET measurements for measuring planes and lines | 3d | 2015-01-12 A | 2015-01-14 A |  | 100% |  |  |  |  |  |  |
| 12 | 2.3 | Measurements tests, documentation | 2d | 2015-01-20 A | 2015-01-21 A | 10, 11 | 100% |  |  |  |  |  |  |
| 13 | 3 | **Adjustable objects** | 1d | 2015-01-07 A | 2015-01-07 A |  | 100% |  |  |  | Tomas Hubinek | 26.4h | 26.4h |
| 14 | 3.1 | Check consistency and errors | 1d | 2015-01-07 A | 2015-01-07 A |  | 100% |  |  |  | Tomas Hubinek | 8h | 8h |
| 15 | 3.2 | Doxy documentation | 0.3d | 2015-01-07 A | 2015-01-07 A |  | 100% |  |  |  | Tomas Hubinek | 2.4h | 2.4h |
| 16 | 3.3 | Test adjustable object classes | 1d | 2015-01-07 A | 2015-01-07 A |  | 100% |  |  |  | Tomas Hubinek | 8h | 8h |
| 17 | 4 | Complete reference frame transformations | 4d | 2015-01-07 A | 2015-01-12 A |  | 100% |  |  |  |  |  |  |
| 18 | 5 | **Contribution Generators** | 26d | 2015-01-22 A | 2015-02-26 | 9, 17 | 77% | 6d | 0d |  |  |  |  |
| 19 | 5.1 | Decide about data flow and general design | 4d | 2015-01-22 A | 2015-01-27 A |  | 100% |  |  |  |  |  |  |
| 20 | 5.2 | Implement contributions required for HIE-ISOLDE | 14d | 2015-01-28 A | 2015-02-16 A | 19 | 100% |  |  |  |  |  |  |
| 21 | 5.3 | Cont. generator -- tests, debugging, documentation | 8d | 2015-02-17 A | 2015-02-26 | 20 | 25% | 6d | 0d |  |  |  |  |
| 22 | 6 | **LS Calculation** | 30d | 2015-02-27 A | 2015-04-09 | 13, 9, 1, 18 | 69% | 9.38d | 0d |  |  | 320h | 220h |
| 23 | 6.1 | LS input matrices filler impl. | 13d | 2015-02-27 A | 2015-03-17 A |  | 100% |  |  |  | Tomas Hubinek | 104h | 104h |
| 24 | 6.2 | LS output matrices extractor impl. | 8d | 2015-02-27 A | 2015-03-10 |  | 75% | 2d | 6.5d | 5d | Tomas Hubinek | 64h | 48h |
| 25 | 6.3 | Filler/extractor tests, debugging, documentation | 8d | 2015-03-18 | 2015-03-27 | 23, 24 |  |  | 1.5d | 0d | Tomas Hubinek | 64h |  |
| 26 | 6.4 | Adapting LS algorithms | 7d | 2015-03-30 A | 2015-04-07 A | 25 | 100% |  |  |  | Marie Anne Henri Barbier | 56h | 56h |
| 27 | 6.5 | Statistics for LS process | 2d | 2015-03-30 A | 2015-03-31 | 25 | 75% | 0.5d | 5d |  | Marie Anne Henri Barbier | 16h | 12h |
| 28 | 6.6 | Testing LS algorithms and statistics | 2d | 2015-04-08 | 2015-04-09 | 26, 27 |  |  | 0d |  | Marie Anne Henri Barbier | 16h |  |

| ID | WBS | Task | Duration | Start | Finish | Predecessors | Total slack | Resources | Work |
| --- | --- | --- | --- | --- | --- | --- | --- | --- | --- |
| 29 | 7 | **Results writer** | 11d | 2015-04-10 | 2015-04-24 | 22 | 0d | Tomas Hubinek | 88h |
| 30 | 7.1 | Adapt writer from LGC1 | 8d | 2015-04-10 | 2015-04-21 |  | 0d |  |  |
| 31 | 7.2 | Writer -- tests, debugging, documentation | 3d | 2015-04-22 | 2015-04-24 | 30 | 0d |  |  |
| 32 | 8 | Review and fix units problems | 1d | 2015-04-10 | 2015-04-10 | 22 | 22d |  |  |
| 33 | 9 | Testing complex input files | 5d | 2015-04-10 | 2015-04-16 | 22 | 18d | Marie Anne Henri Barbier | 40h |
| 34 | 10 | Portation to Linux | 3d | 2015-04-10 | 2015-04-14 | 22 | 20d |  |  |
| 35 | 11 | Final validation / Fixing bugs | 12d | 2015-04-27 | 2015-05-12 | 29 | 0d |  |  |
